# SRA2021-G04-项目甘特图0.1

Schedule from MS Project, 2021-03-11 to 2021-06-24, A marks actual dates.

## Calendars

- 标准: Mon-Fri 08:00-12:00, 13:00-17:00; Sat-Sun 09:00-16:00.

## Resources

| Resource |
| --- |
| G04全体成员 |
| 邵美芝 |
| 王心怡 |
| 豆欣童 |
| 曹未 |
| 李晓菁 |

## Schedule

| ID | WBS | Task | Type | Duration | Start | Finish | Predecessors | Complete | Remaining | Resources | Work | Actual work |
| --- | --- | --- | --- | --- | --- | --- | --- | --- | --- | --- | --- | --- |
| 1 | 1 | **项目启动阶段** |  | 1.5d | 2021-03-11 08:00 A | 2021-03-12 12:00 A |  | 100% |  |  | 7h | 7h |
| 2 | 1.1 | 小组会议 | manual | 0.25d | 2021-03-11 08:00 A | 2021-03-11 10:00 A |  | 100% |  | G04全体成员 | 2h | 2h |
| 3 | 1.2 | 确定项目选题 | manual | 0.5d | 2021-03-12 08:00 A | 2021-03-12 12:00 A | 2 | 100% |  | G04全体成员 | 4h | 4h |
| 4 | 1.3 | 创建，管理git仓库 | manual | 0.12d | 2021-03-12 08:00 A | 2021-03-12 09:00 A | 2 | 100% |  | 李晓菁 | 1h | 1h |
| 5 | 2 | **项目计划阶段** |  | 13.82d | 2021-03-12 08:00 A | 2021-03-26 10:36 | 4 | 85% | 2.11d |  | 86.82h | 81.42h |
| 6 | 2.1 | 编写项目章程1~3 | manual | 0.25d | 2021-03-12 08:00 A | 2021-03-12 10:00 A | 2 | 100% |  | 曹未 | 2h | 2h |
| 7 | 2.2 | 编写项目章程4~6 | manual | 0.25d | 2021-03-12 08:00 A | 2021-03-12 10:00 A | 2 | 100% |  | 豆欣童 | 2h | 2h |
| 8 | 2.3 | 编写项目章程7~13 | manual | 0.25d | 2021-03-12 08:00 A | 2021-03-12 10:00 A | 2 | 100% |  | 王心怡 | 2h | 2h |
| 9 | 2.4 | 编写可行性分析报告1，3 |  | 0.12d | 2021-03-13 08:00 A | 2021-03-13 09:12 A | 2 | 100% |  | 曹未 | 1h | 1h |
| 10 | 2.5 | 编写可行性分析报告2，4 |  | 0.25d | 2021-03-13 08:00 A | 2021-03-13 10:00 A | 2 | 100% |  | 豆欣童 | 2h | 2h |
| 11 | 2.6 | 编写可行性分析报告5~8 |  | 0.25d | 2021-03-13 08:00 A | 2021-03-13 10:00 A | 2 | 100% |  | 王心怡 | 2h | 2h |
| 12 | 2.7 | 编写甘特图 |  | 0.38d | 2021-03-13 08:00 A | 2021-03-13 11:00 A | 2 | 100% |  | 邵美芝 | 3h | 3h |
| 13 | 2.8 | 编写项目计划书 |  | 0.23d | 2021-03-13 08:00 A | 2021-03-13 11:12 A | 12 | 100% |  | 李晓菁 | 1h | 1h |
| 14 | 2.9 | 该阶段PPT制作 |  | 0.38d | 2021-03-14 08:00 A | 2021-03-14 11:00 A | 11, 10, 9 | 100% |  | 邵美芝 | 3h | 3h |
| 16 | 2.10 | 小组会议 | manual | 0.25d | 2021-03-16 08:00 A | 2021-03-16 10:00 A | 14 | 100% |  | G04全体成员 | 2h | 2h |
| 17 | 2.11 | 修改WBS | manual | 0.25d | 2021-03-17 08:00 A | 2021-03-17 10:00 A | 16 | 100% |  | 李晓菁 | 2h | 2h |
| 18 | 2.12 | 修改甘特图 | manual | 0.25d | 2021-03-17 08:00 A | 2021-03-17 10:00 A | 17 | 100% |  | 邵美芝 | 2h | 2h |
| 19 | 2.13 | 修改项目计划子计划——成本 | manual | 0.25d | 2021-03-18 08:00 A | 2021-03-18 10:00 A | 16 | 100% |  | 曹未 | 2h | 2h |
| 20 | 2.14 | 修改项目计划子计划——风险 | manual | 0.25d | 2021-03-18 08:00 A | 2021-03-18 10:00 A | 16 | 100% |  | 豆欣童 | 2h | 2h |
| 21 | 2.15 | 修改项目计划子计划——人力资源 | manual | 0.25d | 2021-03-18 08:00 A | 2021-03-18 10:00 A | 16 | 100% |  | 王心怡 | 2h | 2h |
| 22 | 2.16 | 课堂预审 | manual | 0.38d | 2021-03-19 08:00 A | 2021-03-19 11:00 A |  | 100% |  | G04全体成员 | 3h | 3h |
| 23 | 2.17 | 小组会议 | manual | 0.88d | 2021-03-19 08:00 A | 2021-03-19 16:00 A | 22 | 100% |  | 曹未; 豆欣童; 李晓菁; 邵美芝; 王心怡 | 15h | 15h |
| 24 | 2.18 | 甘特图修改 |  | 0.25d | 2021-03-20 08:00 A | 2021-03-20 10:00 A | 23 | 100% |  | 邵美芝 | 2h | 2h |
| 25 | 2.19 | 项目章程修订 |  | 0.25d | 2021-03-20 08:00 A | 2021-03-20 10:00 A | 23 | 100% |  | 王心怡 | 2h | 2h |
| 26 | 2.20 | 需求工程项目计划第一大部分（到时间管理） |  | 0.25d | 2021-03-21 08:00 A | 2021-03-21 10:00 A | 23 | 100% |  | 王心怡 | 2h | 2h |
| 27 | 2.21 | 需求工程项目计划第二大部分（到沟通管理） |  | 0.25d | 2021-03-21 08:00 A | 2021-03-21 10:00 A | 23 | 100% |  | 豆欣童 | 2h | 2h |
| 28 | 2.22 | 需求工程项目计划第三大部分（到配置管理） |  | 0.25d | 2021-03-21 08:00 A | 2021-03-21 10:00 A | 23 | 100% |  | 李晓菁 | 2h | 2h |
| 29 | 2.23 | 需求工程项目计划第四大部分（到采购管理） |  | 0.5d | 2021-03-21 08:00 A | 2021-03-21 12:00 A | 23 | 100% |  | 曹未 | 4h | 4h |
| 30 | 2.24 | PPT修改 |  | 0.38d | 2021-03-21 08:00 A | 2021-03-21 11:24 A | 29 | 100% |  | 邵美芝 | 3h | 3h |
| 31 | 2.25 | 小组会议 | manual | 1d | 2021-03-23 08:00 A | 2021-03-23 17:00 A | 30 | 100% |  | G04全体成员 | 8h | 8h |
| 32 | 2.26 | 修改需求工程项目计划 | manual | 0.48d | 2021-03-24 08:00 A | 2021-03-24 11:49 A | 31 | 100% |  | G04全体成员 | 3.82h | 3.82h |
| 33 | 2.27 | 修改PPT | manual | 0.38d | 2021-03-25 08:00 A | 2021-03-25 11:00 A | 31 | 100% |  | 邵美芝 | 3h | 3h |
| 34 | 2.28 | 需求工程项目计划正式评审 | manual | 0.88d | 2021-03-26 09:00 A | 2021-03-26 17:00 | 33 | 23% | 0.68d | G04全体成员 | 7h | 1.6h |

| ID | WBS | Task | Type | Duration | Start | Finish | Predecessors | Resources | Work |
| --- | --- | --- | --- | --- | --- | --- | --- | --- | --- |
| 35 | 3 | **项目实施阶段（包括需求开发和管理）** |  | 74.25d | 2021-03-26 08:00 | 2021-06-10 17:00 | 34 |  | 324.6h |
| 36 | 3.1 | **需求开发** |  | 54d | 2021-03-26 08:00 | 2021-05-20 17:00 | 34 |  | 258.6h |
| 38 | 3.1.1 | **需求获取** |  | 22.25d | 2021-03-26 08:00 | 2021-04-17 17:00 | 33 |  | 144.6h |
| 39 | 3.1.1.1 | 编写项目试图与范围 | manual | 0.2d | 2021-03-26 09:00 | 2021-03-26 10:36 | 33 | 豆欣童; 邵美芝 | 2.6h |
| 40 | 3.1.1.2 | 确定开发过程 | manual | 0.5d | 2021-03-28 08:00 | 2021-03-28 12:00 | 33 | 邵美芝 | 4h |
| 41 | 3.1.1.3 | 用户群分类 | manual | 2.88d | 2021-03-26 09:00 | 2021-03-29 10:00 | 33 | 曹未; 李晓菁 | 39h |
| 42 | 3.1.1.4 | 选择产品代表 | manual | 2.75d | 2021-03-26 09:00 | 2021-03-28 17:00 | 33 | 豆欣童; 王心怡 | 44h |
| 43 | 3.1.1.5 | 召开应用程序开发联席会议 | manual | 1.38d | 2021-04-02 16:00 | 2021-04-04 13:00 |  | 邵美芝 | 9h |
| 44 | 3.1.1.6 | 分析用户工作流程 | manual | 1.38d | 2021-04-06 16:00 | 2021-04-08 11:00 | 43 | 王心怡 | 11h |
| 45 | 3.1.1.7 | 确定质量属性 | manual | 2.5d | 2021-04-06 21:00 | 2021-04-09 09:00 | 43 | 邵美芝 | 15h |
| 46 | 3.1.1.8 | 检查问题报告 | manual | 1.38d | 2021-04-06 21:00 | 2021-04-07 17:00 | 43 | 豆欣童 | 11h |
| 47 | 3.1.1.9 | 需求重用 | manual | 1.5d | 2021-04-13 19:00 | 2021-04-14 16:00 | 39, 40, 45 | 曹未 | 9h |
| 48 | 3.1.2 | **需求分析** |  | 21.38d | 2021-04-17 08:00 | 2021-05-08 17:00 | 47 |  | 84h |
| 49 | 3.1.2.1 | 绘制关联图 | manual | 3.38d | 2021-04-17 08:00 | 2021-04-20 12:00 | 47 | 豆欣童 | 22h |
| 50 | 3.1.2.2 | 创作开发原型 | manual | 1.75d | 2021-04-21 08:00 | 2021-04-22 15:00 | 47 | 李晓菁 | 9h |
| 51 | 3.1.2.3 | 分析可行性 | manual | 1.5d | 2021-04-17 09:00 | 2021-04-18 14:00 | 47 | 曹未 | 12h |
| 52 | 3.1.2.4 | 为需求建立模型 | manual | 1.5d | 2021-04-17 09:00 | 2021-04-18 14:00 | 47 | 王心怡 | 12h |
| 53 | 3.1.2.5 | 编写数据字典 | manual | 1.62d | 2021-05-02 08:00 | 2021-05-03 14:00 | 47 | 邵美芝 | 9h |
| 54 | 3.1.2.6 | 应用质量工作调配 | manual | 3.12d | 2021-05-04 08:00 | 2021-05-07 09:00 | 47 | 曹未 | 16h |
| 55 | 3.1.2.7 | 指名需求来源 | manual | 0.5d | 2021-05-07 08:00 | 2021-05-07 12:00 | 47 | 王心怡 | 4h |
| 56 | 3.1.3 | **需求规格审核** |  | 12.62d | 2021-05-08 08:00 | 2021-05-20 17:00 | 47 |  | 30h |
| 57 | 3.1.3.1 | 审查需求文档 | manual | 1.25d | 2021-05-09 09:00 | 2021-05-10 11:00 | 49, 50, 53, 55 | 李晓菁 | 5h |
| 58 | 3.1.3.2 | 编写测试用例 | manual | 0.75d | 2021-05-12 08:00 | 2021-05-12 15:00 | 57 | 邵美芝 | 6h |
| 59 | 3.1.3.3 | 编写用户手册 | manual | 1.5d | 2021-05-12 10:00 | 2021-05-13 15:00 | 57 | 豆欣童 | 12h |
| 60 | 3.1.3.4 | 确定合格标准 | manual | 1.38d | 2021-05-12 10:00 | 2021-05-13 14:00 | 57 | 王心怡 | 7h |

| ID | WBS | Task | Type | Duration | Start | Finish | Predecessors | Total slack | Resources | Work |
| --- | --- | --- | --- | --- | --- | --- | --- | --- | --- | --- |
| 61 | 3.2 | **需求变更阶段** |  | 20.25d | 2021-05-21 08:00 | 2021-06-10 17:00 | 60 |  |  | 66h |
| 62 | 3.2.1 | **需求变更评估** |  | 1.02d? | 2021-05-16 10:00 | 2021-05-17 10:12 | 60 | 0d |  | 22h |
| 64 | 3.2.1.1 | 确定需求变更 | manual | 1.02d | 2021-05-16 10:00 | 2021-05-17 10:12 | 60 |  | 豆欣童 | 8h |
| 65 | 3.2.1.2 | 建立变更委员会 | manual | 0.9d | 2021-05-16 10:00 | 2021-05-17 09:12 | 60 |  | 李晓菁 | 7h |
| 66 | 3.2.1.3 | 进行变更影响分析 | manual | 1.02d | 2021-05-16 10:00 | 2021-05-17 10:12 | 60 |  | 邵美芝 | 7h |
| 67 | 3.2.2 | **需求变更控制** |  | 16.62d | 2021-05-19 08:12 | 2021-06-05 10:12 | 66 | 0d |  | 23h |
| 68 | 3.2.2.1 | 跟踪每一项变更 | manual | 2.88d | 2021-05-19 08:12 | 2021-05-21 16:12 | 66 |  | 李晓菁 | 7h |
| 69 | 3.2.2.2 | 编写需求变更文档的基准版本和控制版本 | manual | 1.38d | 2021-06-02 08:00 | 2021-06-03 11:00 | 64, 65, 66 |  | 王心怡 | 8h |
| 70 | 3.2.2.3 | 维护变更记录 | manual | 1.02d | 2021-06-04 09:00 | 2021-06-05 10:12 | 69 |  | 邵美芝 | 8h |
| 71 | 3.2.3 | **需求变更跟踪** |  | 2.75d | 2021-06-04 08:00 | 2021-06-06 16:36 | 70 | 0d |  | 21h |
| 72 | 3.2.3.1 | 制作需求变更PPT | manual | 1.02d | 2021-06-04 08:00 | 2021-06-05 09:12 | 69 |  | 曹未 | 8h |
| 73 | 3.2.3.2 | 跟踪需求状态 | manual | 0.5d | 2021-06-06 08:00 | 2021-06-06 12:00 | 72 |  | 豆欣童 | 4h |
| 74 | 3.2.3.3 | 衡量需求稳定性 | manual | 1.82d | 2021-06-05 09:00 | 2021-06-06 16:36 | 72 |  | 李晓菁 | 9h |
| 75 | 4 | **项目管理阶段** |  | 7.75d | 2021-06-11 08:00 | 2021-06-18 17:00 | 74 |  |  | 14h |
| 77 | 4.1 | 参与阶段性评审 | manual | 1.75d | 2021-06-10 09:36 | 2021-06-11 16:36 | 74 |  | 李晓菁 | 8h |
| 78 | 4.2 | 定期例会 | manual | 0.75d | 2021-06-15 19:00 | 2021-06-16 09:00 | 77 |  | G04全体成员 | 6h |
| 79 | 5 | **项目收尾阶段** |  | 6.75d | 2021-06-18 08:00 | 2021-06-24 17:00 | 78 |  |  | 26.6h |
| 80 | 5.1 | 项目质量验收与审核 | manual | 1.12d | 2021-06-17 09:00 | 2021-06-18 10:00 | 78 |  | 王心怡 | 7h |
| 81 | 5.2 | 项目交付 | manual | 0.5d | 2021-06-19 08:00 | 2021-06-19 12:00 | 80 |  | G04全体成员 | 4h |
| 82 | 5.3 | 召开总结会议 | manual | 1.95d | 2021-06-22 08:00 | 2021-06-23 16:36 | 80 |  | G04全体成员 | 15.6h |
