# SRA2021-G04-项目甘特图0.1

Schedule from MS Project, 2021-03-11 to 2021-06-24, A marks actual dates.

## Calendars

- 标准: Mon-Fri 08:00-12:00, 13:00-17:00; Sat-Sun 09:00-16:00.

## Resources

| Resource |
| --- |
| G04全体成员 |
| 邵美芝 |
| 王心怡 |
| 豆欣童 |
| 曹未 |
| 李晓菁 |

## Schedule

| ID | WBS | Task | Type | Duration | Start | Finish | Predecessors | Complete | Actual finish | Resources | Work | Actual work |
| --- | --- | --- | --- | --- | --- | --- | --- | --- | --- | --- | --- | --- |
| 1 | 1 | **项目启动阶段** |  | 1.5d | 2021-03-11 08:00 A | 2021-03-12 12:00 A |  | 100% |  |  | 7h | 7h |
| 2 | 1.1 | 小组会议 | manual | 0.25d | 2021-03-11 08:00 A | 2021-03-11 10:00 A |  | 100% |  | G04全体成员 | 2h | 2h |
| 3 | 1.2 | 确定项目选题 | manual | 0.5d | 2021-03-12 08:00 A | 2021-03-12 12:00 A | 2 | 100% |  | G04全体成员 | 4h | 4h |
| 4 | 1.3 | 创建，管理git仓库 | manual | 0.12d | 2021-03-12 08:00 A | 2021-03-12 09:00 A | 2 | 100% |  | 李晓菁 | 1h | 1h |
| 5 | 2 | **项目计划阶段** |  | 13.82d | 2021-03-12 08:00 A | 2021-03-26 10:36 | 4 | 100% | 2021-03-26 17:00 |  | 86.82h | 86.82h |
| 6 | 2.1 | 编写项目章程1~3 | manual | 0.25d | 2021-03-12 08:00 A | 2021-03-12 10:00 A | 2 | 100% |  | 曹未 | 2h | 2h |
| 7 | 2.2 | 编写项目章程4~6 | manual | 0.25d | 2021-03-12 08:00 A | 2021-03-12 10:00 A | 2 | 100% |  | 豆欣童 | 2h | 2h |
| 8 | 2.3 | 编写项目章程7~13 | manual | 0.25d | 2021-03-12 08:00 A | 2021-03-12 10:00 A | 2 | 100% |  | 王心怡 | 2h | 2h |
| 9 | 2.4 | 编写可行性分析报告1，3 |  | 0.12d | 2021-03-13 08:00 A | 2021-03-13 09:12 A | 2 | 100% |  | 曹未 | 1h | 1h |
| 10 | 2.5 | 编写可行性分析报告2，4 |  | 0.25d | 2021-03-13 08:00 A | 2021-03-13 10:00 A | 2 | 100% |  | 豆欣童 | 2h | 2h |
| 11 | 2.6 | 编写可行性分析报告5~8 |  | 0.25d | 2021-03-13 08:00 A | 2021-03-13 10:00 A | 2 | 100% |  | 王心怡 | 2h | 2h |
| 12 | 2.7 | 编写甘特图 |  | 0.38d | 2021-03-13 08:00 A | 2021-03-13 11:00 A | 2 | 100% |  | 邵美芝 | 3h | 3h |
| 13 | 2.8 | 编写项目计划书 |  | 0.23d | 2021-03-13 08:00 A | 2021-03-13 11:12 A | 12 | 100% |  | 李晓菁 | 1h | 1h |
| 14 | 2.9 | 该阶段PPT制作 |  | 0.38d | 2021-03-14 08:00 A | 2021-03-14 11:00 A | 11, 10, 9 | 100% |  | 邵美芝 | 3h | 3h |
| 15 | 2.10 | 小组会议 | manual | 0.25d | 2021-03-16 08:00 A | 2021-03-16 10:00 A | 14 | 100% |  | G04全体成员 | 2h | 2h |
| 16 | 2.11 | 修改WBS | manual | 0.25d | 2021-03-17 08:00 A | 2021-03-17 10:00 A | 15 | 100% |  | 李晓菁 | 2h | 2h |
| 17 | 2.12 | 修改甘特图 | manual | 0.25d | 2021-03-17 08:00 A | 2021-03-17 10:00 A | 16 | 100% |  | 邵美芝 | 2h | 2h |
| 18 | 2.13 | 修改项目计划子计划——成本 | manual | 0.25d | 2021-03-18 08:00 A | 2021-03-18 10:00 A | 15 | 100% |  | 曹未 | 2h | 2h |
| 19 | 2.14 | 修改项目计划子计划——风险 | manual | 0.25d | 2021-03-18 08:00 A | 2021-03-18 10:00 A | 15 | 100% |  | 豆欣童 | 2h | 2h |
| 20 | 2.15 | 修改项目计划子计划——人力资源 | manual | 0.25d | 2021-03-18 08:00 A | 2021-03-18 10:00 A | 15 | 100% |  | 王心怡 | 2h | 2h |
| 21 | 2.16 | 课堂预审 | manual | 0.38d | 2021-03-19 08:00 A | 2021-03-19 11:00 A |  | 100% |  | G04全体成员 | 3h | 3h |
| 22 | 2.17 | 小组会议 | manual | 0.88d | 2021-03-19 08:00 A | 2021-03-19 16:00 A | 21 | 100% |  | 曹未; 豆欣童; 李晓菁; 邵美芝; 王心怡 | 15h | 15h |
| 23 | 2.18 | 甘特图修改 |  | 0.25d | 2021-03-20 08:00 A | 2021-03-20 10:00 A | 22 | 100% |  | 邵美芝 | 2h | 2h |
| 24 | 2.19 | 项目章程修订 |  | 0.25d | 2021-03-20 08:00 A | 2021-03-20 10:00 A | 22 | 100% |  | 王心怡 | 2h | 2h |
| 25 | 2.20 | 需求工程项目计划第一大部分（到时间管理） |  | 0.25d | 2021-03-21 08:00 A | 2021-03-21 10:00 A | 22 | 100% |  | 王心怡 | 2h | 2h |
| 26 | 2.21 | 需求工程项目计划第二大部分（到沟通管理） |  | 0.25d | 2021-03-21 08:00 A | 2021-03-21 10:00 A | 22 | 100% |  | 豆欣童 | 2h | 2h |
| 27 | 2.22 | 需求工程项目计划第三大部分（到配置管理） |  | 0.25d | 2021-03-21 08:00 A | 2021-03-21 10:00 A | 22 | 100% |  | 李晓菁 | 2h | 2h |
| 28 | 2.23 | 需求工程项目计划第四大部分（到采购管理） |  | 0.5d | 2021-03-21 08:00 A | 2021-03-21 12:00 A | 22 | 100% |  | 曹未 | 4h | 4h |
| 29 | 2.24 | PPT修改 |  | 0.38d | 2021-03-21 08:00 A | 2021-03-21 11:24 A | 28 | 100% |  | 邵美芝 | 3h | 3h |
| 30 | 2.25 | 小组会议 | manual | 1d | 2021-03-23 08:00 A | 2021-03-23 17:00 A | 29 | 100% |  | G04全体成员 | 8h | 8h |
| 31 | 2.26 | 修改需求工程项目计划 | manual | 0.48d | 2021-03-24 08:00 A | 2021-03-24 11:49 A | 30 | 100% |  | G04全体成员 | 3.82h | 3.82h |
| 32 | 2.27 | 修改PPT | manual | 0.38d | 2021-03-25 08:00 A | 2021-03-25 11:00 A | 30 | 100% |  | 邵美芝 | 3h | 3h |
| 33 | 2.28 | 需求工程项目计划正式评审 | manual | 0.88d | 2021-03-26 09:00 A | 2021-03-26 17:00 A | 32 | 100% |  | G04全体成员 | 7h | 7h |

| ID | WBS | Task | Type | Duration | Start | Finish | Predecessors | Complete | Remaining | Actual start | Resources | Work | Actual work |
| --- | --- | --- | --- | --- | --- | --- | --- | --- | --- | --- | --- | --- | --- |
| 34 | 3 | **项目实施阶段（包括需求开发和管理）** |  | 74.25d | 2021-03-26 08:00 | 2021-06-10 17:00 | 33 | 71% | 21.84d | 2021-03-25 11:00 |  | 292.83h | 226.08h |
| 35 | 3.1 | **需求开发** |  | 61.38d | 2021-03-25 11:00 A | 2021-05-27 17:00 | 33 | 99% | 0.43d |  |  | 227.68h | 226.08h |
| 36 | 3.1.1 | 编写项目愿景与范围前半部分 | manual | 0.88d | 2021-03-26 09:00 A | 2021-03-27 09:02 A | 32 | 100% |  |  | 李晓菁 | 7.04h | 7.04h |
| 37 | 3.1.2 | 编写项目愿景与范围后半部分 | manual | 0.78d | 2021-03-25 11:00 A | 2021-03-26 09:14 A | 32 | 100% |  |  | 王心怡 | 6.24h | 6.24h |
| 38 | 3.1.3 | 确定开发过程 | manual | 0.7d | 2021-03-28 08:00 A | 2021-03-28 13:36 A | 32 | 100% |  |  | 邵美芝 | 5.6h | 5.6h |
| 39 | 3.1.4 | 小组会议 | manual | 0.2d | 2021-03-25 11:00 A | 2021-03-25 13:36 A | 32 | 100% |  |  | G04全体成员 | 1.6h | 1.6h |
| 40 | 3.1.5 | 用户群分类 | manual | 0.5d | 2021-04-01 08:00 A | 2021-04-01 12:00 A | 39 | 100% |  |  | 豆欣童 | 4h | 4h |
| 41 | 3.1.6 | 选择用户代表 | manual | 0.7d | 2021-04-02 08:00 A | 2021-04-02 14:36 A | 39 | 100% |  |  | 曹未 | 5.6h | 5.6h |
| 42 | 3.1.7 | 修改项目计划、甘特图 | manual | 1d | 2021-04-05 08:00 A | 2021-04-05 17:00 A | 39 | 100% |  |  | 邵美芝 | 8h | 8h |
| 43 | 3.1.8 | 建立核心队伍 | manual | 1d | 2021-04-06 08:00 A | 2021-04-06 17:00 A | 42 | 100% |  |  | 王心怡 | 8h | 8h |
| 44 | 3.1.9 | 小组会议 | manual | 0.2d | 2021-04-06 08:00 A | 2021-04-06 09:36 A | 42 | 100% |  |  | G04全体成员 | 1.6h | 1.6h |
| 45 | 3.1.10 | 进行用户访谈(游客、管理员) | manual | 1d | 2021-04-07 08:00 A | 2021-04-07 17:00 A | 44 | 100% |  |  | 李晓菁 | 8h | 8h |
| 46 | 3.1.11 | 愿景与范围确认 | manual | 0.2d | 2021-04-08 08:00 A | 2021-04-08 09:36 A | 37 | 100% |  |  | G04全体成员 | 1.6h | 1.6h |
| 47 | 3.1.12 | 小组会议 | manual | 0.2d | 2021-04-08 09:36 A | 2021-04-08 11:12 A | 46 | 100% |  |  | G04全体成员 | 1.6h | 1.6h |
| 48 | 3.1.13 | 修改项目计划 | manual | 0.2d | 2021-04-09 08:00 A | 2021-04-09 09:36 A | 47 | 100% |  |  | 邵美芝 | 1.6h | 1.6h |
| 49 | 3.1.14 | 重新编写项目愿景与范围文档前半部 | manual | 0.3d | 2021-04-10 08:00 A | 2021-04-10 10:24 A | 47 | 100% |  |  | 李晓菁 | 2.4h | 2.4h |
| 50 | 3.1.15 | 重新编写项目愿景与范围文档后半部 | manual | 0.3d | 2021-04-10 08:00 A | 2021-04-10 10:24 A | 47 | 100% |  |  | 王心怡 | 2.4h | 2.4h |
| 51 | 3.1.16 | 设计界面原型草图首页等页面 | manual | 0.5d | 2021-04-11 08:00 A | 2021-04-11 12:00 A | 50 | 100% |  |  | 曹未 | 4h | 4h |
| 52 | 3.1.17 | 设计界面原型草图个人主页等页面 | manual | 0.5d | 2021-04-12 08:00 A | 2021-04-12 12:00 A | 47 | 100% |  |  | 豆欣童 | 4h | 4h |
| 53 | 3.1.18 | 再次确认愿景与范围 | manual | 0.2d | 2021-04-13 08:00 A | 2021-04-13 09:36 A | 52, 51 | 100% |  |  | G04全体成员 | 1.6h | 1.6h |
| 54 | 3.1.19 | 进行教师用户访谈 | manual | 0.2d | 2021-04-13 08:00 A | 2021-04-13 09:36 A | 53 | 100% |  |  | G04全体成员 | 1.6h | 1.6h |
| 55 | 3.1.20 | 进行学生用户访谈 | manual | 0.2d | 2021-04-14 08:00 A | 2021-04-14 09:36 A | 53 | 100% |  |  | 曹未 | 1.6h | 1.6h |
| 56 | 3.1.21 | 进行管理员和游客用户访谈 | manual | 0.2d | 2021-04-14 08:00 A | 2021-04-14 09:36 A | 53 | 100% |  |  | 邵美芝 | 1.6h | 1.6h |
| 57 | 3.1.22 | 愿景与范围文档修改 | manual | 0.2d | 2021-04-15 08:00 A | 2021-04-15 09:36 A | 53 | 100% |  |  | 王心怡 | 1.6h | 1.6h |
| 58 | 3.1.23 | 小组会议 | manual | 0.2d | 2021-04-15 09:36 A | 2021-04-15 11:12 A | 57 | 100% |  |  | G04全体成员 | 1.6h | 1.6h |
| 59 | 3.1.24 | 界面原型工具概念、原理、工具相关PPT的制作 | manual | 0.8d | 2021-04-16 08:00 A | 2021-04-16 15:24 A | 58 | 100% |  |  | 李晓菁 | 6.4h | 6.4h |
| 60 | 3.1.25 | “个人主页”页面界面原型制作 | manual | 0.5d | 2021-04-16 08:00 A | 2021-04-16 12:00 A | 58 | 100% |  |  | 曹未 | 4h | 4h |
| 61 | 3.1.26 | “设置”页面的原型制作 | manual | 0.2d | 2021-04-17 08:00 A | 2021-04-17 09:36 A | 58 | 100% |  |  | 豆欣童 | 1.6h | 1.6h |
| 62 | 3.1.27 | “博客”首页原型制作 | manual | 0.3d | 2021-04-17 08:00 A | 2021-04-17 10:24 A | 58 | 100% |  |  | 邵美芝 | 2.4h | 2.4h |
| 63 | 3.1.28 | “论坛”首页原型制作 | manual | 0.2d | 2021-04-17 08:00 A | 2021-04-17 09:36 A | 58 | 100% |  |  | 王心怡 | 1.6h | 1.6h |
| 64 | 3.1.29 | “问答”首页原型制作 | manual | 0.3d | 2021-04-18 08:00 A | 2021-04-18 10:24 A | 58 | 100% |  |  | 李晓菁 | 2.4h | 2.4h |
| 65 | 3.1.30 | “添加博客”原型制作 | manual | 0.2d | 2021-04-18 08:00 A | 2021-04-18 09:36 A | 58 | 100% |  |  | 曹未 | 1.6h | 1.6h |
| 66 | 3.1.31 | “添加帖子”原型制作 | manual | 0.2d | 2021-04-19 08:00 A | 2021-04-19 09:36 A | 58 | 100% |  |  | 豆欣童 | 1.6h | 1.6h |
| 67 | 3.1.32 | “添加问答”原型制作 | manual | 0.3d | 2021-04-19 08:00 A | 2021-04-19 10:24 A | 58 | 100% |  |  | 王心怡 | 2.4h | 2.4h |
| 68 | 3.1.33 | “博客详情”页面原型制作 | manual | 0.3d | 2021-04-19 08:00 A | 2021-04-19 10:24 A | 58 | 100% |  |  | 李晓菁 | 2.4h | 2.4h |
| 69 | 3.1.34 | “帖子详情”页面原型制作 | manual | 0.3d | 2021-04-20 08:00 A | 2021-04-20 10:24 A | 58 | 100% |  |  | 曹未 | 2.4h | 2.4h |
| 70 | 3.1.35 | “问答详情”页面原型制作 | manual | 0.3d | 2021-04-20 08:00 A | 2021-04-20 10:24 A | 58 | 100% |  |  | 王心怡 | 2.4h | 2.4h |
| 71 | 3.1.36 | “登陆”页面原型制作 | manual | 0.3d | 2021-04-21 08:00 A | 2021-04-21 10:24 A | 58 | 100% |  |  | 邵美芝 | 2.4h | 2.4h |
| 72 | 3.1.37 | “注册”页面原型制作 | manual | 0.3d | 2021-04-22 08:00 A | 2021-04-22 10:24 A | 58 | 100% |  |  | 豆欣童 | 2.4h | 2.4h |
| 73 | 3.1.38 | 小组会议 | manual | 0.2d | 2021-04-22 10:24 A | 2021-04-22 12:00 A | 72 | 100% |  |  | G04全体成员 | 1.6h | 1.6h |
| 74 | 3.1.39 | “博客”模块界面原型修改和添加交互 | manual | 0.2d | 2021-04-23 08:00 A | 2021-04-23 09:36 A | 73 | 100% |  |  | 曹未 | 1.6h | 1.6h |
| 75 | 3.1.40 | “论坛”模块界面原型修改和添加交互 | manual | 0.2d | 2021-04-23 08:00 A | 2021-04-23 09:36 A | 73 | 100% |  |  | 豆欣童 | 1.6h | 1.6h |
| 76 | 3.1.41 | “问答”模块界面原型修改和添加交互 | manual | 0.2d | 2021-04-24 08:00 A | 2021-04-24 09:36 A | 73 | 100% |  |  | 李晓菁 | 1.6h | 1.6h |
| 77 | 3.1.42 | “个人主页”模块的子页面制作 | manual | 0.2d | 2021-04-24 08:00 A | 2021-04-24 09:36 A | 73 | 100% |  |  | 邵美芝 | 1.6h | 1.6h |
| 78 | 3.1.43 | “设置”模块界面原型页面制作 | manual | 0.2d | 2021-04-25 08:00 A | 2021-04-25 09:36 A | 73 | 100% |  |  | 王心怡 | 1.6h | 1.6h |
| 79 | 3.1.44 | 教师和学生模块的博客功能用例图文档编写 | manual | 0.2d | 2021-04-25 08:00 A | 2021-04-25 09:36 A | 73 | 100% |  |  | 曹未 | 1.6h | 1.6h |
| 80 | 3.1.45 | 教师和学生模块的论坛功能用例图文档编写 | manual | 0.2d | 2021-04-26 08:00 A | 2021-04-26 09:36 A | 73 | 100% |  |  | 豆欣童 | 1.6h | 1.6h |
| 81 | 3.1.46 | 教师和学生模块的问答功能用例图文档编写 | manual | 0.2d | 2021-04-26 08:00 A | 2021-04-26 09:36 A | 73 | 100% |  |  | 李晓菁 | 1.6h | 1.6h |
| 82 | 3.1.47 | 教师和学生模块的个人主页功能用例图文档编写 | manual | 0.2d | 2021-04-27 08:00 A | 2021-04-27 09:36 A | 73 | 100% |  |  | 邵美芝 | 1.6h | 1.6h |
| 83 | 3.1.48 | 教师和学生模块的注册登录功能用例图文档编写 | manual | 0.2d | 2021-04-27 08:00 A | 2021-04-27 09:36 A | 73 | 100% |  |  | 王心怡 | 1.6h | 1.6h |
| 84 | 3.1.49 | 教师用户访谈 | manual | 0.2d | 2021-04-27 08:00 A | 2021-04-27 09:36 A | 83 | 100% |  |  | G04全体成员 | 1.6h | 1.6h |
| 85 | 3.1.50 | 小组会议 | manual | 0.2d | 2021-04-27 08:00 A | 2021-04-27 09:36 A | 84 | 100% |  |  | G04全体成员 | 1.6h | 1.6h |
| 86 | 3.1.51 | “管理员”模块用例图编写 | manual | 0.2d | 2021-04-28 08:00 A | 2021-04-28 09:36 A | 85 | 100% |  |  | 曹未 | 1.6h | 1.6h |
| 87 | 3.1.52 | “管理员”模块界面原型制作 | manual | 0.2d | 2021-04-29 08:00 A | 2021-04-29 09:36 A | 85 | 100% |  |  | 邵美芝 | 1.6h | 1.6h |
| 88 | 3.1.53 | 小组会议 | manual | 0.2d | 2021-04-29 08:00 A | 2021-04-29 09:36 A | 87 | 100% |  |  | G04全体成员 | 1.6h | 1.6h |
| 89 | 3.1.54 | E-R图初步制作 | manual | 0.5d | 2021-05-02 08:00 A | 2021-05-02 12:00 A | 88 | 100% |  |  | 李晓菁 | 4h | 4h |
| 90 | 3.1.55 | 测试用例文档初步制作 | manual | 0.5d | 2021-05-03 08:00 A | 2021-05-03 12:00 A | 88 | 100% |  |  | 王心怡 | 4h | 4h |
| 91 | 3.1.56 | 管理员模块界面原型制作 | manual | 0.5d | 2021-05-04 08:00 A | 2021-05-04 12:00 A | 88 | 100% |  |  | 曹未 | 4h | 4h |
| 92 | 3.1.57 | 教师模块界面原型修改和完善 | manual | 0.5d | 2021-05-05 08:00 A | 2021-05-05 12:00 A | 88 | 100% |  |  | 豆欣童 | 4h | 4h |
| 93 | 3.1.58 | 用例文档对话框图的制作和完善 | manual | 0.5d | 2021-05-06 08:00 A | 2021-05-06 12:00 A | 88 | 100% |  |  | 邵美芝 | 4h | 4h |
| 94 | 3.1.59 | 小组会议 | manual | 0.1d | 2021-05-06 13:00 A | 2021-05-06 13:48 A | 93 | 100% |  |  | G04全体成员 | 0.8h | 0.8h |
| 95 | 3.1.60 | 测试用例的具体完善 | manual | 1d | 2021-05-06 13:48 A | 2021-05-07 13:48 A | 94 | 100% |  |  | 王心怡 | 8h | 8h |
| 96 | 3.1.61 | E-R图和数据字典的修改 | manual | 0.2d | 2021-05-07 08:00 A | 2021-05-07 09:36 A | 94 | 100% |  |  | 李晓菁 | 1.6h | 1.6h |
| 97 | 3.1.62 | 需求优先级文档的编写 | manual | 0.2d | 2021-05-07 08:00 A | 2021-05-07 09:36 A | 94 | 100% |  |  | 邵美芝 | 1.6h | 1.6h |
| 98 | 3.1.63 | APP端界面原型的完善和修改 | manual | 0.2d | 2021-05-08 08:00 A | 2021-05-08 09:36 A | 94 | 100% |  |  | 豆欣童 | 1.6h | 1.6h |
| 99 | 3.1.64 | 网页端界面原型的完善和优化 | manual | 0.2d | 2021-05-09 08:00 A | 2021-05-09 09:36 A | 94 | 100% |  |  | 曹未 | 1.6h | 1.6h |
| 100 | 3.1.65 | 用户手册的编写和完善 | manual | 0.2d | 2021-05-10 08:00 A | 2021-05-10 09:36 A | 94 | 100% |  |  | 邵美芝 | 1.6h | 1.6h |
| 101 | 3.1.66 | 教师用户访谈 | manual | 0.1d | 2021-05-06 13:48 A | 2021-05-06 14:36 A | 94 | 100% |  |  | G04全体成员 | 0.8h | 0.8h |
| 102 | 3.1.67 | 小组会议 | manual | 0.1d | 2021-05-06 14:36 A | 2021-05-06 15:24 A | 101 | 100% |  |  | G04全体成员 | 0.8h | 0.8h |
| 103 | 3.1.68 | 愿景与范围文档的修改 | manual | 0.2d | 2021-05-11 08:00 A | 2021-05-11 09:36 A | 102 | 100% |  |  | 王心怡 | 1.6h | 1.6h |

| ID | WBS | Task | Type | Duration | Start | Finish | Predecessors | Complete | Resources | Work | Actual work |
| --- | --- | --- | --- | --- | --- | --- | --- | --- | --- | --- | --- |
| 104 | 3.1.69 | 需求可行性分析文档的修改 | manual | 0.2d | 2021-05-11 08:00 A | 2021-05-11 09:36 A | 102 | 100% | 李晓菁 | 1.6h | 1.6h |
| 105 | 3.1.70 | 用户群文档的修改 | manual | 0.2d | 2021-05-12 08:00 A | 2021-05-12 09:36 A | 102 | 100% | 李晓菁 | 1.6h | 1.6h |
| 106 | 3.1.71 | 网页端界面原型数据管理和举报模块的细化 | manual | 0.4d | 2021-05-12 08:00 A | 2021-05-12 11:12 A | 102 | 100% | 曹未 | 3.2h | 3.2h |
| 107 | 3.1.72 | app端界面原型我的页面的修改和个人主页页面的添加 | manual | 0.4d | 2021-05-12 08:00 A | 2021-05-12 11:12 A | 102 | 100% | 豆欣童 | 3.2h | 3.2h |
| 108 | 3.1.73 | SRS的初步编写 | manual | 0.2d | 2021-05-12 08:00 A | 2021-05-12 09:36 A | 102 | 100% | 王心怡 | 1.6h | 1.6h |
| 109 | 3.1.74 | 需求开发阶段PPT的制作 | manual | 0.2d | 2021-05-13 08:00 A | 2021-05-13 09:36 A | 102 | 100% | 邵美芝 | 1.6h | 1.6h |
| 110 | 3.1.75 | 版本管理和项目计划的修改 | manual | 0.2d | 2021-05-13 08:00 A | 2021-05-13 09:36 A | 102 | 100% | 邵美芝 | 1.6h | 1.6h |
| 111 | 3.1.76 | JAD会议 | manual | 0.2d | 2021-05-06 15:24 A | 2021-05-06 17:00 A | 102 | 100% | G04全体成员 | 1.6h | 1.6h |
| 112 | 3.1.77 | 小组会议 | manual | 0.2d | 2021-05-13 08:00 A | 2021-05-13 09:36 A | 111 | 100% | G04全体成员 | 1.6h | 1.6h |
| 113 | 3.1.78 | 完善app端界面原型 | manual | 0.2d | 2021-05-14 08:00 A | 2021-05-14 09:36 A | 111 | 100% | 豆欣童 | 1.6h | 1.6h |
| 114 | 3.1.79 | 完善网页端界面原型 | manual | 0.2d | 2021-05-15 08:00 A | 2021-05-15 09:36 A | 111 | 100% | 曹未 | 1.6h | 1.6h |
| 115 | 3.1.80 | 完善SRS文档 | manual | 0.2d | 2021-05-17 08:00 A | 2021-05-17 09:36 A | 111 | 100% | 王心怡 | 1.6h | 1.6h |
| 116 | 3.1.81 | 完善用例文档 | manual | 0.2d | 2021-05-18 08:00 A | 2021-05-18 09:36 A | 111 | 100% | 李晓菁 | 1.6h | 1.6h |
| 117 | 3.1.82 | 修改PPT | manual | 0.2d | 2021-05-19 08:00 A | 2021-05-19 09:36 A | 111 | 100% | 邵美芝 | 1.6h | 1.6h |
| 118 | 3.1.83 | 需求规格预评审 | manual | 0.2d | 2021-05-20 08:00 A | 2021-05-20 09:36 A | 117 | 100% | G04全体成员 | 1.6h | 1.6h |
| 119 | 3.1.84 | 小组会议 | manual | 0.2d | 2021-05-20 08:00 A | 2021-05-20 09:36 A | 118 | 100% | G04全体成员 | 1.6h | 1.6h |
| 120 | 3.1.85 | app界面原型的进一步完善（细节、交互） | manual | 0.2d | 2021-05-21 08:00 A | 2021-05-21 09:36 A | 119 | 100% | 曹未 | 1.6h | 1.6h |
| 121 | 3.1.86 | web界面原型的进一步完善（细节、交互） | manual | 0.2d | 2021-05-22 08:00 A | 2021-05-22 09:36 A | 119 | 100% | 豆欣童 | 1.6h | 1.6h |
| 122 | 3.1.87 | 用例文档的进一步完善 | manual | 0.2d | 2021-05-23 08:00 A | 2021-05-23 09:36 A | 119 | 100% | 邵美芝 | 1.6h | 1.6h |
| 123 | 3.1.88 | 用户手册的进一步完善 | manual | 0.2d | 2021-05-24 08:00 A | 2021-05-24 09:36 A | 119 | 100% | 李晓菁 | 1.6h | 1.6h |
| 124 | 3.1.89 | 测试用例文档的进一步完善 | manual | 0.2d | 2021-05-25 08:00 A | 2021-05-25 09:36 A | 119 | 100% | 王心怡 | 1.6h | 1.6h |
| 125 | 3.1.90 | 项目计划的更新以及配置管理 | manual | 0.2d | 2021-05-26 08:00 A | 2021-05-26 09:36 A | 119 | 100% | 邵美芝 | 1.6h | 1.6h |
| 126 | 3.1.91 | SRS文档的修改 | manual | 0.2d | 2021-05-26 08:00 A | 2021-05-26 09:36 A | 119 | 100% | 王心怡 | 1.6h | 1.6h |
| 127 | 3.1.92 | 需求规格PPT的修改 | manual | 0.2d | 2021-05-27 08:00 A | 2021-05-27 09:36 A | 126 | 100% | 邵美芝 | 1.6h | 1.6h |
| 128 | 3.1.93 | 需求规格正式评审 | manual | 0.2d | 2021-05-27 08:00 | 2021-05-27 09:36 | 127 |  | G04全体成员 | 1.6h |  |

| ID | WBS | Task | Type | Duration | Start | Finish | Predecessors | Total slack | Resources | Work |
| --- | --- | --- | --- | --- | --- | --- | --- | --- | --- | --- |
| 129 | 3.2 | **需求变更阶段** |  | 20.25d | 2021-05-21 08:00 | 2021-06-10 17:00 | 118 |  |  | 65.15h |
| 130 | 3.2.1 | **需求变更评估** |  | 1.02d | 2021-05-18 11:12 | 2021-05-19 11:24 | 118 | 0d |  | 21.15h |
| 131 | 3.2.1.1 | 确定需求变更 | manual | 1.02d | 2021-05-18 11:12 | 2021-05-19 11:24 | 118 |  | 豆欣童 | 8h |
| 132 | 3.2.1.2 | 建立变更委员会 | manual | 0.9d | 2021-05-18 11:12 | 2021-05-19 10:24 | 118 |  | 李晓菁 | 6.15h |
| 133 | 3.2.1.3 | 进行变更影响分析 | manual | 1.02d | 2021-05-18 11:12 | 2021-05-19 11:24 | 118 |  | 邵美芝 | 7h |
| 134 | 3.2.2 | **需求变更控制** |  | 16.62d | 2021-05-19 08:12 | 2021-06-05 10:12 | 133 | 0d |  | 23h |
| 135 | 3.2.2.1 | 跟踪每一项变更 | manual | 2.88d | 2021-05-19 08:12 | 2021-05-21 16:12 | 133 |  | 李晓菁 | 7h |
| 136 | 3.2.2.2 | 编写需求变更文档的基准版本和控制版本 | manual | 1.38d | 2021-06-02 08:00 | 2021-06-03 11:00 | 131, 132, 133 |  | 王心怡 | 8h |
| 137 | 3.2.2.3 | 维护变更记录 | manual | 1.02d | 2021-06-04 09:00 | 2021-06-05 10:12 | 136 |  | 邵美芝 | 8h |
| 138 | 3.2.3 | **需求变更跟踪** |  | 2.75d | 2021-06-04 08:00 | 2021-06-06 16:36 | 137 | 0d |  | 21h |
| 139 | 3.2.3.1 | 制作需求变更PPT | manual | 1.02d | 2021-06-04 08:00 | 2021-06-05 09:12 | 136 |  | 曹未 | 8h |
| 140 | 3.2.3.2 | 跟踪需求状态 | manual | 0.5d | 2021-06-06 08:00 | 2021-06-06 12:00 | 139 |  | 豆欣童 | 4h |
| 141 | 3.2.3.3 | 衡量需求稳定性 | manual | 1.82d | 2021-06-05 09:00 | 2021-06-06 16:36 | 139 |  | 李晓菁 | 9h |
| 142 | 4 | **项目管理阶段** |  | 7.75d | 2021-06-11 08:00 | 2021-06-18 17:00 | 141 |  |  | 14h |
| 144 | 4.1 | 参与阶段性评审 | manual | 1.75d | 2021-06-10 09:36 | 2021-06-11 16:36 | 141 |  | 李晓菁 | 8h |
| 145 | 4.2 | 定期例会 | manual | 0.75d | 2021-06-15 19:00 | 2021-06-16 09:00 | 144 |  | G04全体成员 | 6h |
| 146 | 5 | **项目收尾阶段** |  | 6.75d | 2021-06-18 08:00 | 2021-06-24 17:00 | 145 |  |  | 26.6h |
| 147 | 5.1 | 项目质量验收与审核 | manual | 1.12d | 2021-06-17 09:00 | 2021-06-18 10:00 | 145 |  | 王心怡 | 7h |
| 148 | 5.2 | 项目交付 | manual | 0.5d | 2021-06-19 08:00 | 2021-06-19 12:00 | 147 |  | G04全体成员 | 4h |
| 149 | 5.3 | 召开总结会议 | manual | 1.95d | 2021-06-22 08:00 | 2021-06-23 16:36 | 147 |  | G04全体成员 | 15.6h |
